# Maré Seguros / Cronograma 13-11

Schedule from ProjectLibre, 2026-02-25 to 2027-03-10.

## Calendars

- Maré Seguros - dias úteis[Imported]: Mon-Fri 08:00-12:00, 13:00-17:00; Sat-Sun off. Exceptions (off unless hours are given): 2026-04-03, 2026-04-21, 2026-05-01, 2026-06-04, 2026-06-24, 2026-07-02, 2026-09-07, 2026-10-12, 2026-11-02, 2026-11-20, 2026-12-25, 2027-01-01, 2027-02-08 to 2027-02-09.

## Resources

| Resource |
| --- |
| Não atribuído |

## Schedule

| ID | WBS | Task | Duration | Start | Finish | Predecessors | Baseline start | Baseline finish |
| --- | --- | --- | --- | --- | --- | --- | --- | --- |
| 1 | 1.1 | **Descoberta e fundação** | 31d | 2026-02-25 | 2026-04-08 |  |  |  |
| 2 | 1.1.1 | **Descoberta** | 22d | 2026-02-25 | 2026-03-26 |  |  |  |
| 3 | A01 | A01 · Pesquisar os usuários e definir o MVP | 17d | 2026-02-25 | 2026-03-19 |  | 2026-02-23 | 2026-03-16 |
| 4 | A02 | A02 · Mapear a jornada e prototipar as telas-chave | 9d | 2026-03-04 | 2026-03-16 | 3SS+5d | 2026-03-02 | 2026-03-16 |
| 5 | A03 | A03 · Definir os indicadores e os OKRs do produto | 5d | 2026-03-20 | 2026-03-26 | 3 | 2026-03-17 | 2026-03-24 |
| 6 | 1.1.2 | **Infraestrutura** | 26d | 2026-03-04 | 2026-04-08 |  |  |  |
| 7 | A04 | A04 · Definir a arquitetura e montar os ambientes de nuvem | 17d | 2026-03-04 | 2026-03-26 | 3SS+5d | 2026-03-02 | 2026-03-23 |
| 8 | A05 | A05 · Configurar a esteira de integração e entrega contínuas | 8d | 2026-03-27 | 2026-04-08 | 7 | 2026-03-24 | 2026-04-06 |
| 9 | 1.2 | **Conformidade e parcerias** | 113d | 2026-03-20 | 2026-09-02 |  |  |  |
| 10 | 1.2.1 | **Jurídico e dados** | 30d | 2026-03-20 | 2026-05-05 |  |  |  |
| 11 | A06 | A06 · Adequar o produto à LGPD e redigir os termos de uso | 30d | 2026-03-20 | 2026-05-05 | 3 | 2026-03-17 | 2026-04-29 |
| 12 | A07 | A07 · Elaborar o relatório de impacto à proteção de dados | 9d | 2026-04-03 | 2026-04-16 | 11SS+10d | 2026-03-31 | 2026-04-13 |
| 13 | 1.2.2 | **Regulatório** | 64d | 2026-05-21 | 2026-08-21 |  |  |  |
| 14 | A08 | A08 · Adequar às normas da Susep e registrar o novo processo de regulação | 64d | 2026-05-21 | 2026-08-21 | 11, 63SS+20d | 2026-05-20 | 2026-08-19 |
| 15 | 1.2.3 | **Parcerias** | 113d | 2026-03-20 | 2026-09-02 |  |  |  |
| 16 | A09 | A09 · Selecionar o provedor de IA de imagens e os fornecedores-chave | 20d | 2026-03-20 | 2026-04-17 | 3 | 2026-03-17 | 2026-04-06 |
| 17 | A10 | A10 · Negociar e assinar os contratos de parceria | 14d | 2026-04-20 | 2026-05-11 | 16 | 2026-04-07 | 2026-04-17 |
| 18 | A11 | A11 · Integrar os sistemas com o provedor de IA de imagens | 38d | 2026-05-12 | 2026-07-06 | 17 | 2026-04-20 | 2026-05-22 |
| 19 | A12 | A12 · Homologar a integração com o provedor de IA de imagens | 42d | 2026-07-07 | 2026-09-02 | 18 | 2026-05-25 | 2026-06-05 |
| 20 | 1.3 | **Hardware e estrutura física** | 141d | 2026-03-20 | 2026-10-13 |  |  |  |
| 21 | 1.3.1 | **Hardware** | 101d | 2026-03-20 | 2026-08-17 |  |  |  |
| 22 | A13 | A13 · Especificar: kits de vistoria para 40 oficinas | 8d | 2026-03-20 | 2026-03-31 | 3 | 2026-03-17 | 2026-03-27 |
| 23 | A14 | A14 · Cotar e comprar: kits de vistoria para 40 oficinas | 8d | 2026-04-01 | 2026-04-13 | 22 | 2026-03-30 | 2026-04-09 |
| 24 | A15 | A15 · Fabricar e entregar: kits de vistoria para 40 oficinas | 42d | 2026-04-14 | 2026-06-15 | 23 | 2026-04-10 | 2026-06-05 |
| 25 | A16 | A16 · Homologar tecnicamente: kits de vistoria para 40 oficinas | 17d | 2026-07-24 | 2026-08-17 | 24, 63 | 2026-07-13 | 2026-08-03 |

| ID | WBS | Task | Duration | Start | Finish | Predecessors | Baseline start | Baseline finish |
| --- | --- | --- | --- | --- | --- | --- | --- | --- |
| 26 | 1.3.2 | **Distribuição** | 115d | 2026-04-29 | 2026-10-13 |  |  |  |
| 27 | A17 | A17 · Preparar os pontos de instalação | 10d | 2026-04-29 | 2026-05-13 | 23FS+10d | 2026-04-27 | 2026-05-12 |
| 28 | A18 | A18 · Distribuir e instalar nos pontos | 33d | 2026-08-18 | 2026-10-02 | 25, 27 | 2026-08-04 | 2026-09-18 |
| 29 | A19 | A19 · Testar os pontos instalados por amostragem | 6d | 2026-10-05 | 2026-10-13 | 28 | 2026-09-21 | 2026-09-28 |
| 30 | 1.4 | **Conteúdo e lançamento** | 59d | 2026-03-20 | 2026-06-16 |  |  |  |
| 31 | 1.4.1 | **Conteúdo** | 59d | 2026-03-20 | 2026-06-16 |  |  |  |
| 32 | A20 | A20 · Montar a base de fotos de treino e as regras de regulação | 50d | 2026-03-20 | 2026-06-02 | 3, 4 | 2026-03-17 | 2026-04-30 |
| 33 | A21 | A21 · Revisar e publicar o conteúdo | 9d | 2026-06-03 | 2026-06-16 | 32 | 2026-05-04 | 2026-05-14 |
| 34 | 1.4.2 | **Marca e campanha** | 55d | 2026-03-20 | 2026-06-10 |  |  |  |
| 35 | A22 | A22 · Criar a identidade de marca e os materiais | 21d | 2026-03-20 | 2026-04-20 | 3 | 2026-03-17 | 2026-04-15 |
| 36 | A23 | A23 · Planejar o pré-lançamento e a campanha | 22d | 2026-04-21 | 2026-05-22 | 35 | 2026-04-16 | 2026-05-18 |
| 37 | A24 | A24 · Produzir as peças da campanha | 12d | 2026-05-25 | 2026-06-10 | 36 | 2026-05-19 | 2026-06-03 |
| 38 | A25 | A25 · Montar a lista de espera e a comunidade de primeiros usuários | 14d | 2026-04-21 | 2026-05-12 | 35 | 2026-04-16 | 2026-05-11 |
| 39 | 1.5 | **Piloto e operação** | 135d | 2026-05-12 | 2026-11-25 |  |  |  |
| 40 | 1.5.1 | **Piloto** | 124d | 2026-05-12 | 2026-11-09 |  |  |  |
| 41 | A26 | A26 · Recrutar e preparar os participantes do piloto | 8d | 2026-05-12 | 2026-05-21 | 17, 38SS+5d | 2026-04-24 | 2026-05-08 |
| 42 | A27 | A27 · Conduzir o piloto com 40 oficinas credenciadas e 25 corretores | 38d | 2026-09-03 | 2026-10-28 | 63, 19, 14SS+20d, 41, 5 | 2026-07-13 | 2026-09-04 |
| 43 | A28 | A28 · Analisar os resultados do piloto e definir os ajustes | 7d | 2026-10-29 | 2026-11-09 | 42 | 2026-09-08 | 2026-09-16 |
| 44 | 1.5.2 | **Atendimento** | 43d | 2026-09-10 | 2026-11-11 |  |  |  |
| 45 | A29 | A29 · Montar a central de atendimento e o suporte | 37d | 2026-09-18 | 2026-11-11 | 42SS+10d | 2026-07-27 | 2026-09-08 |
| 46 | A30 | A30 · Elaborar a base de conhecimento e os roteiros de atendimento | 13d | 2026-09-10 | 2026-09-28 | 42SS+5d | 2026-07-20 | 2026-08-05 |
| 47 | 1.5.3 | **Treinamento** | 19d | 2026-10-29 | 2026-11-25 |  |  |  |
| 48 | A31 | A31 · Treinar os parceiros e segurados | 19d | 2026-10-29 | 2026-11-25 | 42, 46 | 2026-09-08 | 2026-10-02 |
| 49 | 1.6 | **Qualidade e entrada em operação** | 112d | 2026-09-25 | 2027-03-10 |  |  |  |
| 50 | 1.6.1 | **Testes finais** | 14d | 2026-12-11 | 2026-12-31 |  |  |  |
| 51 | A32 | A32 · Executar os testes de carga e de segurança | 8d | 2026-12-11 | 2026-12-22 | 65, 8 | 2026-10-05 | 2026-10-15 |
| 52 | A33 | A33 · Realizar a auditoria e corrigir os apontamentos | 6d | 2026-12-23 | 2026-12-31 | 51, 12 | 2026-10-16 | 2026-10-23 |

| ID | WBS | Task | Duration | Start | Finish | Predecessors | Baseline start | Baseline finish |
| --- | --- | --- | --- | --- | --- | --- | --- | --- |
| 53 | 1.6.2 | **Lançamento** | 77d | 2026-09-25 | 2027-01-18 |  |  |  |
| 54 | A34 | A34 · Elaborar o plano de entrada em operação e de retorno | 6d | 2026-09-25 | 2026-10-02 | 42SS+15d | 2026-08-03 | 2026-08-11 |
| 55 | A35 | A35 · Entrar em operação e veicular a campanha de lançamento | 11d | 2027-01-01 | 2027-01-18 | 52, 29, 37, 45, 48, 14, 33, 43, 54 | 2026-10-26 | 2026-11-10 |
| 56 | 1.6.3 | **Estabilização** | 42d | 2027-01-08 | 2027-03-10 |  |  |  |
| 57 | A36 | A36 · Acompanhar a operação assistida pós-lançamento | 29d | 2027-01-19 | 2027-03-02 | 55 | 2026-11-11 | 2026-12-22 |
| 58 | A37 | A37 · Medir os resultados do lançamento e ajustar o funil | 16d | 2027-01-08 | 2027-01-29 | 55SS+5d | 2026-11-03 | 2026-11-25 |
| 59 | A38 | A38 · Registrar as lições aprendidas | 6d | 2027-02-09 | 2027-02-17 | 57SS+15d | 2026-12-03 | 2026-12-10 |
| 60 | A39 | A39 · Encerrar o projeto e transferir para a operação | 6d | 2027-03-03 | 2027-03-10 | 57, 67, 58, 59 | 2026-12-23 | 2026-12-31 |
| 61 | 1.7 | **Produto digital (frente ágil)** | 205d | 2026-04-22 | 2027-02-18 |  |  |  |
| 62 | 1.7.1 | **Release 1 (MVP)** | 63d | 2026-04-22 | 2026-07-23 |  |  |  |
| 63 | A40 | A40 · Desenvolver até a Release 1 (MVP) — sprints 1 a 6 | 63d | 2026-04-22 | 2026-07-23 | 3SS+39d | 2026-04-20 | 2026-07-10 |
| 64 | 1.7.2 | **Release 2** | 96d | 2026-07-24 | 2026-12-10 |  |  |  |
| 65 | A41 | A41 · Desenvolver até a Release 2 — sprints 7 a 12 | 96d | 2026-07-24 | 2026-12-10 | 63 | 2026-07-13 | 2026-10-02 |
| 66 | 1.7.3 | **Release 3** | 46d | 2026-12-11 | 2027-02-18 |  |  |  |
| 67 | A42 | A42 · Desenvolver até a Release 3 — sprints 13 a 17 | 46d | 2026-12-11 | 2027-02-18 | 65 | 2026-10-05 | 2026-12-11 |
